| number | alias | title | done | effort | actualCompletion | progress | floatHours | criticalPath | milestone | forecastTarget | forecastStart | baselineStart | baselineTarget | variance | dependencies | workstream | remainingPlanningHours | new |
| --- | --- | --- | --- | --- | --- | --- | --- | --- | --- | --- | --- | --- | --- | --- | --- | --- | --- | --- |
| 108 | #108 | Patch the local integration image dependency advisory | True | 0 | 2026-09-08 | 100 | 1182.0 | Supporting |  |  |  |  |  |  |  |  |  |  |
| 106 | #106 | Patch the development test-runner security advisory | True | 0 | 2026-09-08 | 100 | 1182.0 | Supporting |  |  |  |  |  |  |  |  |  |  |
| 99 | #99 | Restore badges and distinguish target architecture from delivery status | True | 0 | 2026-09-08 | 100 | 1182.0 | Supporting | 5 | 2026-09-08 |  |  |  |  |  |  |  |  |
| 96 | #96 | Complete repository, architecture and privacy documentation | True | 0 | 2026-09-08 | 100 | 1182.0 | Supporting | 5 | 2026-09-08 | 2026-09-08 |  |  |  |  |  |  |  |
| 93 | #93 | Enforce private-beta resource guardrails | True | 8.0 | 2026-09-09 | 100 | 120.0 | Supporting | 7 | 2026-09-09 | 2026-09-09 | 2026-10-27 | 2026-10-31 | -45 |  |  |  |  |
| 92 | #92 | Attach bounded telemetry to programmatic support intake |  | 16.0 |  | 0 | 1014.0 | Supporting | 10 | 2027-07-08 | 2027-06-30 | 2027-03-08 | 2027-03-15 | 99 | 60, 91 | W1 | 48.0 |  |
| 91 | #91 | Recover accepted payloads through durable storage journals |  | 24.0 |  | 0 | 48.0 | Near-critical | 10 | 2026-11-30 | 2026-11-18 | 2026-10-15 | 2026-10-26 | 30 | 50, 59 | W1 | 72.0 |  |
| 90 | #90 | Expose owner and tenant Cost & Capacity controls |  | 24.0 |  | 0 | 276.0 | Supporting | 6 | 2027-06-26 | 2027-06-15 | 2027-01-09 | 2027-01-20 | 135 | 50, 64, 66 | W1 | 72.0 |  |
| 89 | #89 | Enable verified canonical support-email conversations |  | 24.0 |  | 0 | 696.0 | Supporting | 36 | 2027-06-14 | 2027-05-31 | 2027-01-25 | 2027-02-04 | 111 | 57, 87, 88 | W1 | 72.0 |  |
| 88 | #88 | Dispatch transactional outbound intents reliably |  | 24.0 |  | 0 | 0.0 | Critical | 10 | 2027-02-22 | 2027-02-10 | 2026-12-29 | 2027-01-08 | 38 | 63, 64, 87 | W2 | 72.0 |  |
| 87 | #87 | Normalise provider events into reliable conversation state |  | 32.0 |  | 0 | 0.0 | Critical | 9 | 2026-12-29 | 2026-12-14 | 2026-12-11 | 2026-12-28 | 1 | 51, 59, 91 | W1 | 96.0 |  |
| 86 | #86 | Expose authorised deterministic self-service actions |  | 24.0 |  | 0 | 678.0 | Supporting | 31 | 2027-07-19 | 2027-07-07 | 2027-06-08 | 2027-06-18 | 26 | 61, 81, 83 | W2 | 72.0 |  |
| 85 | #85 | Report operational performance and quality metrics |  | 16 |  | 0 | 360.0 | Supporting | 25 | 2028-01-05 | 2027-12-29 | 2027-07-06 | 2027-07-16 | 148 | 73, 84, 162 | W1 | 48 |  |
| 84 | #84 | Review agent interactions through auditable QA workflows |  | 24.0 |  | 0 | 360.0 | Supporting | 24 | 2027-12-28 | 2027-12-11 | 2027-06-24 | 2027-07-05 | 151 | 63, 82 | W1 | 72.0 |  |
| 83 | #83 | Transfer live agentic work safely to human operators |  | 24.0 |  | 0 | 360.0 | Supporting | 22 | 2027-07-06 | 2027-06-24 | 2027-05-27 | 2027-06-07 | 25 | 70, 80, 81 | W2 | 72.0 |  |
| 82 | #82 | Resolve reference-service tickets through bounded autonomous workflows |  | 32.0 |  | 0 | 360.0 | Supporting | 21 | 2027-12-10 | 2027-11-25 | 2027-06-08 | 2027-06-23 | 146 | 76, 80, 81, 83 | W1 | 96.0 |  |
| 81 | #81 | Bind human approvals to specific proposed actions |  | 24.0 |  | 0 | 360.0 | Supporting | 20 | 2027-06-23 | 2027-06-11 | 2027-05-15 | 2027-05-26 | 24 | 80 | W2 | 72.0 |  |
| 80 | #80 | Validate governed actions against an isolated reference API |  | 40.0 |  | 0 | 360.0 | Supporting | 20 | 2027-06-10 | 2027-05-21 | 2027-04-26 | 2027-05-14 | 23 | 63, 64, 79 | W2 | 120.0 |  |
| 79 | #79 | Enforce granular human and agent capabilities |  | 24.0 |  | 0 | 444.0 | Supporting | 23 | 2026-10-01 | 2026-09-19 | 2027-04-09 | 2027-04-21 | -173 | 19, 63 | W1 | 72.0 |  |
| 78 | #78 | Author and publish governed diagnostic workflows visually |  | 32.0 |  | 0 | 456.0 | Supporting | 27 | 2027-12-27 | 2027-12-11 | 2027-06-24 | 2027-07-09 | 146 | 66, 79, 80, 81, 82 | W2 | 96.0 |  |
| 77 | #77 | Expand the operator copilot with translation and runbooks |  | 16.0 |  | 0 | 552.0 | Supporting | 19 | 2027-11-24 | 2027-11-17 | 2027-05-19 | 2027-05-28 | 154 | 68, 76, 152 | W1 | 48.0 |  |
| 76 | #76 | Add bounded triage and conversation summarisation |  | 24.0 |  | 0 | 384.0 | Supporting | 18 | 2027-11-16 | 2027-11-03 | 2027-05-04 | 2027-05-18 | 156 | 75, 152 | W1 | 72.0 |  |
| 75 | #75 | Enrich intake with authorised operational context |  | 24.0 |  | 0 | 480.0 | Supporting | 17 | 2027-05-29 | 2027-05-18 | 2027-04-22 | 2027-05-03 | 23 | 64, 79 | W1 | 72.0 |  |
| 74 | #74 | Preserve conversations across verified channel changes |  | 24.0 |  | 0 | 0.0 | Critical | 30 | 2027-05-20 | 2027-05-07 | 2027-02-27 | 2027-03-10 | 61 | 53, 61, 87 | W2 | 72.0 |  |
| 73 | #73 | Expose SLA progress and responsible handlers |  | 24.0 |  | 0 | 642.0 | Supporting | 29 | 2026-12-03 | 2026-11-19 | 2027-02-16 | 2027-02-26 | -73 | 61, 63, 136, 162 | W2 | 72.0 |  |
| 72 | #72 | Split and merge tickets without losing context |  | 24.0 |  | 0 | 444.0 | Supporting | 15 | 2027-05-17 | 2027-05-05 | 2027-02-24 | 2027-03-06 | 61 | 59, 63, 70 | W1 | 72.0 |  |
| 71 | #71 | Enable keyboard-first workspace navigation |  | 12.0 |  | 0 | 678.0 | Supporting | 13 | 2027-01-13 | 2027-01-04 | 2027-02-05 | 2027-02-11 | -25 | 62, 66, 128 | W2 | 36.0 |  |
| 70 | #70 | Add typing awareness and private colleague collaboration |  | 24.0 |  | 0 | 372.0 | Supporting | 15 | 2026-11-13 | 2026-11-02 | 2027-02-11 | 2027-02-23 | -87 | 63, 68 | W2 | 72.0 |  |
| 69 | #69 | Add reusable responses and safe operator macros |  | 12.0 |  | 0 | 870.0 | Supporting | 14 | 2027-05-06 | 2027-04-27 | 2027-02-10 | 2027-02-15 | 69 | 68 | W2 | 36.0 |  |
| 68 | #68 | Add a rich conversation composer |  | 24.0 |  | 0 | 372.0 | Supporting | 14 | 2026-10-31 | 2026-10-20 | 2027-01-29 | 2027-02-09 | -86 | 48, 66, 129 | W2 | 72.0 |  |
| 67 | #67 | Package isolated helpdesk Web Components |  | 24.0 |  | 0 | 906.0 | Supporting | 16 | 2027-05-04 | 2027-04-22 | 2027-01-01 | 2027-01-12 | 96 | 48, 66 | W1 | 72.0 |  |
| 66 | #66 | Apply tenant themes through standard CSS variables |  | 16.0 |  | 0 | 204.0 | Supporting | 16 | 2026-10-19 | 2026-10-12 | 2026-12-24 | 2026-12-31 | -63 | 48 | W2 | 48.0 |  |
| 65 | #65 | Rehearse and publish the human-led private beta | True | 16.0 | 2026-09-09 | 100 | 1134.0 | Supporting | 7 | 2026-09-09 | 2026-09-09 | 2026-11-13 | 2026-11-21 | -63 |  |  |  |  |
| 64 | #64 | Enforce resource budgets across active application paths |  | 16.0 |  | 0 | 0.0 | Critical | 6 | 2026-11-17 | 2026-11-10 | 2026-11-06 | 2026-11-16 | 1 | 50, 60, 93, 159 | W1 | 48.0 |  |
| 63 | #63 | Record attributable ticket and conversation audit events | True | 16.0 | 2026-09-09 | 100 | 48.0 | Near-critical | 9 | 2026-09-09 | 2026-09-09 | 2026-10-23 | 2026-10-30 | -44 |  |  |  |  |
| 62 | #62 | Validate human handling of canonical ticket intake | True | 12.0 | 2026-09-09 | 100 | 204.0 | Supporting | 11 | 2026-09-09 | 2026-09-09 | 2026-11-02 | 2026-11-07 | -51 |  |  |  |  |
| 61 | #61 | Validate authenticated portal conversations end to end | True | 12.0 | 2026-09-09 | 100 | 480.0 | Supporting | 28 | 2026-09-15 | 2026-09-09 | 2026-10-31 | 2026-11-05 | -49 |  |  |  |  |
| 60 | #60 | Make API and portal mutations validated and retry-safe | True | 16.0 | 2026-09-09 | 100 | 120.0 | Supporting | 10 | 2026-09-16 | 2026-09-09 | 2026-10-15 | 2026-10-22 | -37 |  |  |  |  |
| 59 | #59 | Map API and portal intake onto canonical conversation contracts | True | 16.0 | 2026-09-09 | 100 | 96.0 | Supporting | 9 | 2026-09-15 | 2026-09-08 | 2026-10-07 | 2026-10-14 | -30 |  |  |  |  |
| 58 | #58 | Provision isolated test tenants reproducibly | True | 12.0 | 2026-09-08 | 100 | 1182.0 | Supporting | 9 | 2026-09-08 | 2026-09-08 | 2026-09-23 | 2026-09-28 | -17 |  |  |  |  |
| 57 | #57 | Establish isolated preview and beta deployments | True | 24.0 | 2026-09-08 | 100 | 1104.0 | Supporting | 7 | 2026-09-08 | 2026-09-08 | 2026-09-11 | 2026-09-22 | -12 |  |  |  |  |
| 56 | #56 | Implement tenant-owned Telegram support messaging |  | 16.0 |  | 0 | 720.0 | Supporting | 33 | 2027-04-26 | 2027-04-19 | 2027-04-01 | 2027-04-08 | 15 | 66, 87, 88 | W2 | 48.0 |  |
| 55 | #55 | Implement tenant-owned WhatsApp messaging |  | 24.0 |  | 0 | 696.0 | Supporting | 32 | 2027-04-21 | 2027-04-09 | 2027-03-19 | 2027-04-03 | 15 | 66, 87, 88 | W1 | 72.0 |  |
| 54 | #54 | Implement tenant-owned Microsoft Teams support channels |  | 32.0 |  | 0 | 672.0 | Supporting | 35 | 2027-04-17 | 2027-04-02 | 2027-03-16 | 2027-03-31 | 15 | 66, 87, 88 | W2 | 96.0 |  |
| 53 | #53 | Implement tenant-owned Slack support channels |  | 24.0 |  | 0 | 0.0 | Critical | 34 | 2027-04-08 | 2027-03-27 | 2027-01-13 | 2027-01-23 | 64 | 66, 87, 88 | W1 | 72.0 |  |
| 52 | #52 | Deliver signed tenant webhook subscriptions reliably |  | 16.0 |  | 0 | 720.0 | Supporting | 10 | 2027-04-01 | 2027-03-25 | 2027-03-11 | 2027-03-18 | 12 | 50, 64, 88 | W2 | 48.0 |  |
| 51 | #51 | Implement authenticated durable webhook ingress |  | 24.0 |  | 0 | 0.0 | Critical | 10 | 2026-12-12 | 2026-12-01 | 2026-11-16 | 2026-11-28 | 12 | 50, 64, 91 | W1 | 72.0 |  |
| 50 | #50 | Define enforceable cost policies and resource budgets |  | 16.0 |  | 0 | 0.0 | Critical | 6 | 2026-09-18 | 2026-09-11 | 2026-09-08 | 2026-09-15 | 3 |  | W1 | 48.0 |  |
| 49 | #49 | Track delivery of the omnichannel architecture |  | 2.0 |  | 0 | 624.0 | Supporting |  | 2027-06-29 | 2027-06-28 | 2027-04-09 | 2027-04-09 | 69 | 51, 52, 53, 54, 55, 56, 74, 89, 90 | W1 | 6.0 |  |
| 48 | #48 | Establish shared headless primitives for standalone Tocyn |  | 40.0 |  | 0 | 204.0 | Supporting | 16 | 2026-10-10 | 2026-09-21 | 2026-12-03 | 2026-12-23 | -63 | 127 | W2 | 120.0 |  |
| 45 | #45 | Evaluate deferred major dependency and Actions upgrades |  | 8.0 |  | 0 | 1134.0 | Supporting | 5 | 2027-03-26 | 2027-03-23 | 2026-11-30 | 2026-12-02 | 98 | 12 | W1 | 24.0 |  |
| 44 | #44 | Retire inactive services while preserving regression coverage |  | 8.0 |  | 0 | 1134.0 | Supporting | 5 | 2027-03-24 | 2027-03-20 | 2026-11-26 | 2026-11-30 | 98 | 14 | W2 | 24.0 |  |
| 42 | #42 | Validate production cutover and rollback readiness |  | 16.0 |  | 0 | 1014.0 | Supporting | 8 | 2027-03-22 | 2027-03-15 | 2026-12-03 | 2026-12-10 | 87 | 65, 159, 160 | W1 | 48.0 |  |
| 22 | #22 | Complete remaining repository launch administration |  | 6.0 |  |  | 1164.0 | Supporting | 5 | 2027-03-13 | 2027-03-11 | 2026-12-01 | 2026-12-03 | 86 | 65 | W1 | 18.0 |  |
| 21 | #21 | Validate accessibility of core operator and portal workflows | True | 12.0 | 2026-09-09 | 100 | 1182.0 | Supporting | 13 | 2026-09-09 | 2026-09-09 | 2026-11-07 | 2026-11-13 | -56 |  |  |  |  |
| 20 | #20 | Verify reproducible local contributor setup | True | 8.0 | 2026-09-08 | 100 | 1182.0 | Supporting | 5 | 2026-09-10 | 2026-09-08 | 2026-09-08 | 2026-09-10 | -2 |  |  |  |  |
| 19 | #19 | Complete tenant-isolation acceptance coverage | True | 16.0 | 2026-09-08 | 100 | 444.0 | Supporting | 9 | 2026-09-15 | 2026-09-08 | 2026-09-29 | 2026-10-06 | -24 |  |  |  |  |
| 18 | #18 | Migrate transactional mail to Cloudflare-native delivery |  | 16.0 |  | 0 | 1134.0 | Supporting | 12 | 2027-03-10 | 2027-03-03 | 2027-01-21 | 2027-01-28 | 35 | 57 | W1 | 48.0 |  |
| 17 | #17 | Complete FidesLang coverage and optional user controls |  | 24.0 |  | 0 | 942.0 | Supporting | 26 | 2027-03-19 | 2027-03-08 | 2027-04-13 | 2027-04-24 | -31 | 16 | W2 | 72.0 |  |
| 16 | #16 | Establish measurable FidesLang coverage |  | 16.0 |  | 0 | 942.0 | Supporting | 26 | 2027-03-06 | 2027-02-27 | 2027-04-05 | 2027-04-12 | -31 | 59, 91 | W2 | 48.0 |  |
| 15 | #15 | Audit codebase health and test coverage | True | 0 | 2026-09-08 | 100 | 1182.0 | Supporting | 5 |  |  |  |  |  |  |  |  |  |
| 14 | #14 | Standardise repository formatting and lint conventions |  | 8.0 |  | 0 | 1134.0 | Supporting | 5 | 2027-03-02 | 2027-02-26 | 2026-11-21 | 2026-11-25 | 83 |  | W1 | 24.0 |  |
| 13 | #13 | Review and remediate codebase security vulnerabilities | True | 0 | 2026-09-08 | 100 | 1182.0 | Supporting | 23 |  |  |  |  |  |  |  |  |  |
| 12 | #12 | Verify required checks on dependency-only pull requests |  | 8.0 |  | 0 | 1134.0 | Supporting | 5 | 2027-02-26 | 2027-02-23 | 2026-09-16 | 2026-09-18 | 138 |  | W2 | 24.0 |  |
| 127 | NEW-UX-01 | Define the post-beta operator workspace interaction contract |  | 12 |  | 0 | 204.0 | Supporting | 37 | 2026-09-19 | 2026-09-11 | 2026-09-11 | 2026-09-19 | 0 | 62 | W2 | 36 | True |
| 128 | NEW-UX-02 | Build the persistent progressive operator workspace |  | 32 |  | 0 | 642.0 | Supporting | 13 | 2027-01-02 | 2026-12-17 | 2026-12-17 | 2027-01-02 | 0 | 127, 129, 130, 48, 66 | W2 | 96 | True |
| 129 | NEW-UX-03 | Persist operator drafts, selection and workspace continuity |  | 20 |  | 0 | 444.0 | Supporting | 37 | 2026-10-14 | 2026-10-02 | 2026-10-02 | 2026-10-14 | 0 | 127, 60, 63, 79 | W1 | 60 | True |
| 130 | NEW-UX-04 | Add task-based work queues and snooze/resurface |  | 24 |  | 0 | 642.0 | Supporting | 37 | 2026-12-16 | 2026-12-04 | 2026-12-04 | 2026-12-16 | 0 | 129, 136, 73, 64 | W2 | 72 | True |
| 131 | NEW-UX-05 | Unify global search and scoped inbox filtering |  | 12 |  | 0 | 678.0 | Supporting | 13 | 2027-01-21 | 2027-01-14 | 2027-01-14 | 2027-01-21 | 0 | 128, 71 | W2 | 36 | True |
| 132 | NEW-UX-06 | Add cognitive-accessibility workspace preferences and focus mode |  | 16 |  | 0 | 642.0 | Supporting | 13 | 2027-01-19 | 2027-01-12 | 2027-01-12 | 2027-01-19 | 0 | 128, 66 | W1 | 48 | True |

| number | alias | title | effort | progress | floatHours | criticalPath | milestone | forecastTarget | forecastStart | baselineStart | baselineTarget | variance | dependencies | workstream | remainingPlanningHours | new |
| --- | --- | --- | --- | --- | --- | --- | --- | --- | --- | --- | --- | --- | --- | --- | --- | --- |
| 133 | NEW-UX-07 | Replace transient ticket toasts with durable operator activity | 16 | 0 | 702.0 | Supporting | 15 | 2027-01-27 | 2027-01-20 | 2027-01-20 | 2027-01-27 | 0 | 128, 63, 70, 66 | W1 | 48 | True |
| 134 | NEW-UX-08 | Add customer context and contextual support panels | 20 | 0 | 642.0 | Supporting | 13 | 2027-02-02 | 2027-01-22 | 2027-01-22 | 2027-02-02 | 0 | 128, 132, 63 | W2 | 60 | True |
| 135 | NEW-UX-09 | Add configurable Table view and safe bulk ticket actions | 16 | 0 | 702.0 | Supporting | 13 | 2027-02-04 | 2027-01-28 | 2027-01-28 | 2027-02-04 | 0 | 128, 60, 64, 79 | W1 | 48 | True |
| 136 | NEW-UX-10 | Add explicit waiting reasons and configurable support workflow states | 24 | 0 | 642.0 | Supporting | 37 | 2026-10-27 | 2026-10-15 | 2026-10-15 | 2026-10-27 | 0 | 127, 60, 63, 79 | W1 | 72 | True |
| 137 | NEW-UX-11 | Add workload-aware queues and operator capacity controls | 24 | 0 | 774.0 | Supporting | 29 | 2027-01-11 | 2026-12-30 | 2026-12-30 | 2027-01-11 | 0 | 73, 79, 162, 130 | W1 | 72 | True |
| 138 | NEW-UX-12 | Define workspace utility actions for call, remote support and external tools | 12 | 0 | 714.0 | Supporting | 13 | 2027-02-09 | 2027-02-03 | 2027-02-03 | 2027-02-09 | 0 | 128, 79 | W2 | 36 | True |
| 139 | NEW-UX-13 | Measure operator interaction performance and enforce UI response budgets | 8 | 0 | 726.0 | Supporting | 13 | 2027-02-10 | 2027-02-05 | 2027-02-05 | 2027-02-10 | 0 | 128, 48 | W1 | 24 | True |
| 140 | NEW-UX-14 | Validate the redesigned operator workspace for usability and cognitive accessibility | 16 | 0 | 642.0 | Supporting | 13 | 2027-02-18 | 2027-02-11 | 2027-02-11 | 2027-02-18 | 0 | 128, 129, 130, 131, 132, 133, 134, 135, 136, 137, 138, 139, 48, 66, 68, 70, 71, 73, 79 | W1 | 48 | True |
| 141 | PG-GOV-00 | Track delivery of the approved helpdesk capability extensions | 2 | 0 | 0.0 | Critical |  | 2028-02-09 | 2028-02-08 | 2028-02-08 | 2028-02-09 | 0 | 142, 143, 144, 145, 146, 147, 148, 149, 150, 151, 152, 153, 154, 155, 156, 157, 158 | W2 | 6 | True |
| 142 | PG-RT-01 | Prove the Cloudflare Realtime support-session architecture | 24 | 0 | 0.0 | Critical | 38 | 2027-07-22 | 2027-07-09 | 2027-07-09 | 2027-07-22 | 0 | 50, 74, 79, 87, 88, 90 | W1 | 72 | True |
| 143 | PG-RT-02 | Model tenant-scoped realtime support sessions and media permissions | 40 | 0 | 0.0 | Critical | 39 | 2027-08-12 | 2027-07-23 | 2027-07-23 | 2027-08-12 | 0 | 142, 50, 64, 74, 79 | W1 | 120 | True |
| 144 | PG-RT-03 | Add browser voice, video and screen-sharing support sessions | 48 | 0 | 120.0 | Supporting | 39 | 2027-09-06 | 2027-08-13 | 2027-08-13 | 2027-09-06 | 0 | 143, 48, 68, 70, 74 | W1 | 144 | True |
| 145 | PG-RT-04 | Implement a tenant-owned telephony gateway for inbound and outbound calls | 48 | 0 | 0.0 | Critical | 40 | 2027-09-18 | 2027-08-26 | 2027-08-26 | 2027-09-18 | 0 | 142, 143, 74, 79, 87, 88, 90 | W2 | 144 | True |
| 146 | PG-RT-05 | Add voicemail, callback, transfer and call-queue operations | 40 | 0 | 0.0 | Critical | 40 | 2027-10-09 | 2027-09-20 | 2027-09-20 | 2027-10-09 | 0 | 145, 70, 73, 79 | W2 | 120 | True |
| 147 | PG-RT-06 | Record and transcribe support sessions under tenant policy | 40 | 0 | 144.0 | Supporting | 41 | 2027-09-27 | 2027-09-07 | 2027-09-07 | 2027-09-27 | 0 | 143, 50, 90 | W1 | 120 | True |
| 148 | PG-RT-07 | Integrate realtime support artefacts into conversations, QA and reporting | 24 | 0 | 0.0 | Critical | 41 | 2028-01-18 | 2028-01-06 | 2028-01-06 | 2028-01-18 | 0 | 144, 146, 147, 76, 77, 84, 85 | W1 | 72 | True |
| 149 | PG-TK-01 | Create linked back-office work items without exposing customer conversations | 32 | 0 | 444.0 | Supporting | 42 | 2027-08-04 | 2027-07-20 | 2027-07-20 | 2027-08-04 | 0 | 70, 72, 79 | W2 | 96 | True |
| 150 | PG-TK-02 | Track service problems and incidents across affected conversations | 40 | 0 | 444.0 | Supporting | 42 | 2027-08-25 | 2027-08-05 | 2027-08-05 | 2027-08-25 | 0 | 149, 72, 79, 88 | W2 | 120 | True |
| 151 | PG-KB-01 | Ingest tenant PDF knowledge with lifecycle-safe provenance | 32 | 0 | 384.0 | Supporting | 43 | 2027-10-14 | 2027-09-28 | 2027-09-28 | 2027-10-14 | 0 | 50, 64, 79 | W1 | 96 | True |
| 152 | PG-KB-02 | Bind AI assistance to authorised tenant knowledge scopes | 24 | 0 | 384.0 | Supporting | 43 | 2027-11-02 | 2027-10-15 | 2027-10-15 | 2027-11-02 | 0 | 151, 79 | W1 | 72 | True |
| 153 | PG-AP-01 | Render governed operator applets from declarative schemas | 40 | 0 | 600.0 | Supporting | 44 | 2027-10-30 | 2027-10-11 | 2027-10-11 | 2027-10-30 | 0 | 48, 68, 75, 79, 80, 81 | W2 | 120 | True |
| 154 | PG-AP-02 | Author, validate and publish tenant applets safely | 32 | 0 | 456.0 | Supporting | 44 | 2028-01-12 | 2027-12-28 | 2027-12-28 | 2028-01-12 | 0 | 153, 66, 78, 79, 80, 81 | W2 | 96 | True |
| 155 | PG-FB-01 | Capture tenant-scoped CSAT and CES feedback | 24 | 0 | 576.0 | Supporting | 45 | 2027-11-12 | 2027-11-01 | 2027-11-01 | 2027-11-12 | 0 | 73, 79, 88 | W2 | 72 | True |
| 156 | PG-RP-01 | Expose a live support-operations management dashboard | 32 | 0 | 0.0 | Critical | 45 | 2028-02-07 | 2028-01-19 | 2028-01-19 | 2028-02-07 | 0 | 73, 85, 155, 150, 148 | W1 | 96 | True |
| 157 | PG-RP-02 | Build bounded tenant-defined operational reports | 40 | 0 | 408.0 | Supporting | 45 | 2028-02-02 | 2028-01-13 | 2028-01-13 | 2028-02-02 | 0 | 50, 79, 85, 155 | W2 | 120 | True |
| 158 | PG-ID-01 | Accept verified Cloudflare Access workforce identity without weakening Tocyn authorisation | 32 | 0 | 1008.0 | Supporting | 46 | 2027-11-29 | 2027-11-13 | 2027-11-13 | 2027-11-29 | 0 | 79 | W2 | 96 | True |
| 159 | OBS | Establish operational observability and service-level objectives | 24 | 0 | 0.0 | Critical | 8 | 2026-11-09 | 2026-10-28 | 2026-10-28 | 2026-11-09 | 0 | 50, 63 | W1 | 72 | True |
| 160 | RES | Define deployment residency and jurisdiction boundaries | 12 | 0 | 1098.0 | Supporting | 8 | 2027-02-25 | 2027-02-19 | 2027-02-19 | 2027-02-25 | 0 | 19 | W1 | 36 | True |
| 161 | AIG | Evaluate AI inference routing, caching and provider fallback | 8 | 0 | 750.0 | Supporting | 17 | 2027-12-03 | 2027-11-30 | 2027-11-30 | 2027-12-03 | 0 | 50, 64, 76 | W2 | 24 | True |
| 162 | METRICS-FOUNDATION | Define operational metric contracts for SLA and routing | 8 | 0 | 690.0 | Supporting | 25 | 2026-11-18 | 2026-11-14 | 2026-11-14 | 2026-11-18 | 0 | 63, 79 | W2 | 24 | True |
